# Stargazer - Semester 2

Schedule from MS Project, 2010-01-06 to 2010-04-20, 4 hours a day.
Okanagan College

## Calendars

- Standard: Mon 14:00-16:30; Tue off; Wed 14:30-16:30; Thu 14:30-18:30; Fri-Sun off. Exceptions (off unless hours are given): 2010-04-20 08:00-12:00, 13:00-17:00.

## Resources

| Resource |
| --- |
| Robert |
| Rob |

## Schedule

| ID | WBS | Task | Duration | Start | Finish | Predecessors | Total slack | Free slack | Constraint | Resources | Work | Text1 |
| --- | --- | --- | --- | --- | --- | --- | --- | --- | --- | --- | --- | --- |
| 1 | 1 | **Construction phase** | 2.56d? | 2010-01-06 14:30 | 2010-01-13 16:15 |  | 29.31d |  |  |  | 52.5h |  |
| 2 | 1.1 | **Website** | 2.56d? | 2010-01-06 14:30 | 2010-01-13 16:15 |  | 29.31d |  |  |  | 20.25h |  |
| 3 | 1.1.1 | Add new online help documentation to website | 1d? | 2010-01-06 14:30 | 2010-01-07 16:30 |  | 29.31d | 0d |  | Robert | 4h | 16 |
| 4 | 1.1.2 | Fix CSS with mobile devices | 15min | 2010-01-07 16:30 | 2010-01-07 16:45 | 3 | 29.31d | 0d | start no earlier than 2010-01-07 08:00 | Rob | 0.25h |  |
| 5 | 1.1.3 | Implement mail server/mailing system | 3h | 2010-01-07 16:45 | 2010-01-11 15:15 | 4 | 29.31d | 0d |  | Rob | 3h | 12 |
| 6 | 1.1.4 | Add pagination to website tables | 3h | 2010-01-11 15:15 | 2010-01-13 16:15 | 5 | 29.31d |  |  | Rob | 3h | 12 |
| 7 | 1.1.5 | Integrate libraries (which have celestial objects of interest) with web site | 4h | 2010-01-06 14:30 | 2010-01-07 16:30 |  | 30.88d |  |  | Robert | 4h | 16 |
| 8 | 1.1.6 | Minor refactoring | 1.5h | 2010-01-06 14:30 | 2010-01-06 16:00 |  | 31.5d |  |  | Rob | 1.5h |  |
| 9 | 1.1.7 | LOW PRIORITY: Remove dropdown select boxes in mobile views | 1h | 2010-01-06 14:30 | 2010-01-06 15:30 |  | 31.62d |  |  | Rob | 1h |  |
| 10 | 1.1.8 | LOW PRIORITY: Fix functional tests | 3h | 2010-01-07 14:30 | 2010-01-07 17:30 |  | 30.62d |  | start no earlier than 2010-01-07 08:00 | Rob | 3h | 12 |
| 11 | 1.1.9 | LOW PRIORITY: migrate database to PostgreSQL | 30min | 2010-01-06 14:30 | 2010-01-06 15:00 |  | 31.75d |  |  | Rob | 0.5h |  |
| 12 | 1.2 | **Job scheduling** | 0.5d | 2010-01-06 14:30 | 2010-01-06 16:30 |  | 31.38d |  |  |  | 3h |  |
| 13 | 1.2.1 | Research Whenever plugin to handle scheduling | 2h | 2010-01-06 14:30 | 2010-01-06 16:30 |  | 31.38d |  |  | Rob | 2h |  |
| 14 | 1.2.2 | Create script which includes connection to telescope server | 1h | 2010-01-06 14:30 | 2010-01-06 15:30 |  | 31.62d |  |  | Rob | 1h |  |
| 15 | 1.3 | **Documentation** | 1d | 2010-01-06 14:30 | 2010-01-07 16:30 |  | 30.88d |  |  |  | 5h | 16 |
| 16 | 1.3.1 | Documentation updates | 4h | 2010-01-06 14:30 | 2010-01-07 16:30 |  | 30.88d |  |  | Rob | 4h | 16 |
| 17 | 1.3.2 | Draft acceptance test | 1h | 2010-01-06 14:30 | 2010-01-06 15:30 |  | 31.62d |  |  | Rob | 1h |  |
| 18 | 1.4 | **Telescope movement** | 1d? | 2010-01-06 14:30 | 2010-01-07 16:30 |  | 30.88d |  |  |  | 6.25h |  |
| 19 | 1.4.1 | Allow for parking the telescope | 15min | 2010-01-06 14:30 | 2010-01-06 14:45 |  | 31.81d |  |  | Robert | 0.25h |  |
| 20 | 1.4.2 | Research telescope movement/positioning with coordinates | 2h | 2010-01-06 14:30 | 2010-01-06 16:30 |  | 31.38d |  |  | Robert | 2h |  |
| 21 | 1.4.3 | LOW PRIORITY: Implement manual telescope positioning | 1d? | 2010-01-06 14:30 | 2010-01-07 16:30 |  | 30.88d |  |  | Robert | 4h | 16 |
| 22 | 1.5 | **Image recognition** | 0.75d | 2010-01-06 14:30 | 2010-01-07 15:30 |  | 31.12d |  |  |  | 6h |  |
| 23 | 1.5.1 | Research image recognition options | 3h | 2010-01-06 14:30 | 2010-01-07 15:30 |  | 31.12d |  |  | Rob; Robert | 6h | 12 |
| 24 | 1.6 | Integrate telescope positioning and image recognition into an application | 1d? | 2010-01-06 14:30 | 2010-01-07 16:30 |  | 30.88d |  |  | Robert | 4h | 16 |
| 25 | 1.7 | Integrate camera to system | 1d? | 2010-01-06 14:30 | 2010-01-07 16:30 |  | 30.88d |  |  | Rob; Robert | 8h | 16 |

| ID | WBS | Task | Type | Duration | Start | Finish | Total slack | Constraint | Resources | Work | Text1 |
| --- | --- | --- | --- | --- | --- | --- | --- | --- | --- | --- | --- |
| 26 | 2 | **Transition phase** |  | 31.88d? | 2010-01-06 08:00 | 2010-04-20 08:00 | 0d |  |  | 16h |  |
| 27 | 2.1 | End refactoring |  | 4h | 2010-01-06 14:30 | 2010-01-07 16:30 | 30.88d |  | Rob; Robert | 8h | 16 |
| 28 | 2.2 | Final acceptance test |  | 1d? | 2010-01-06 14:30 | 2010-01-07 16:30 | 30.88d |  | Rob; Robert | 8h | 16 |
| 29 | 2.3 | Final presentation | milestone | 0d | 2010-04-20 08:00 | 2010-04-20 08:00 | 0d | start no earlier than 2010-04-20 08:00 | Rob; Robert |  |  |
| 30 | 2.4 | Final release | milestone | 0d | 2010-01-06 08:00 | 2010-01-06 08:00 | 31.88d |  | Rob; Robert |  |  |
